# Terminprogramm

How a schedule from MS Project changed from version to version. A marks actual dates.

## Version 1 (data date 2019-10-16, saved 2020-12-11, file 20200507_EP Rh-Fr_PP-AP_SABA_9890-140_FCh.mpp)

| ID | WBS | Task | Duration | Start | Finish | Predecessors | Total float | Constraint |
| --- | --- | --- | --- | --- | --- | --- | --- | --- |
| 1 |  | Projektstart IG | 1d | 2018-10-01 | 2018-10-01 |  |  |  |
| 3 | 2 | **Grundlagen** | 352d | 2018-10-01 | 2020-01-31 |  | 680d |  |
| 4 |  | Grundlagenverifikation | 71d | 2018-10-01 | 2019-01-04 |  | 826d | start no earlier than 2018-10-01 |
| 5 |  | erg. GL-Beschaffung Archive ASTRA/NSNW | 80d | 2018-12-10 | 2019-03-29 |  | 610d | start no earlier than 2018-12-10 |
| 6 |  | Aufarbeitung Archiv/Digitalisierung | 156d | 2019-04-01 | 2019-11-01 | 5 | 610d |  |
| 7 |  | Vervollständigen Grundlagen (Bauwerkskizzen etc) | 40d | 2019-08-05 | 2019-09-27 |  | 636d | start no earlier than 2019-08-05 |
| 8 |  | Plangrundlagen erarbeiten (u.a. IO-Plan) | 156d | 2019-07-01 | 2020-01-31 |  | 545d | start no earlier than 2019-07-01 |
| 9 |  | Perimeterdefinition in Situation | 1d | 2019-04-12 | 2019-04-12 |  | 756d | start no earlier than 2019-04-12 |
| 10 |  | Schnittstellen/Verantwortlichkeiten geklärt | 1d | 2019-04-12 | 2019-04-12 |  | 756d | start no earlier than 2019-04-12 |
| 11 |  | Einfluss aus Drittprojekten geklärt | 1d | 2019-03-01 | 2019-03-01 |  | 786d | start no earlier than 2019-03-01 |
| 12 | 3 | **Dritte** | 501d | 2019-04-29 | 2021-03-26 |  | 380d |  |
| 13 |  | Vermessung: Schachtprotokolle | 68d | 2019-04-29 | 2019-07-31 |  | 678d | start no earlier than 2019-04-29 |
| 14 |  | Vermessung: DTM, Aufnahmen | 110d | 2019-04-29 | 2019-09-27 |  | 636d | start no earlier than 2019-04-29 |
| 15 |  | Lärm: Prüfen Erforderlichkeit AP | 85d | 2019-06-03 | 2019-09-27 |  | 636d | start no earlier than 2019-06-03 |
| 16 |  | PV Umwelt/Akustiker/Verkehrsingenieur/Geologe Grundlagen | 196d | 2019-08-05 | 2020-05-01 |  | 480d | start no earlier than 2019-08-05 |
| 17 |  | Entscheid AP Lärm ja/nein | 1d | 2020-05-01 | 2020-05-01 |  | 480d | start no earlier than 2020-05-01 |
| 18 | 3.6 | **PV Akustik (AP LS)** | 240d | 2020-04-27 | 2021-03-26 |  | 380d |  |
| 19 |  | Erstellung Dossier V 0.9 | 175d | 2020-04-27 | 2020-12-25 |  | 310d | start no earlier than 2020-04-27 |
| 20 |  | Prüfung, Bereinigung, Technische Genehmigung | 60d | 2021-01-04 | 2021-03-26 |  | 245d | start no earlier than 2021-01-04 |
| 21 |  | PV Umwelt (UWN, Etc.) | 85d | 2020-08-03 | 2020-11-27 |  | 330d | start no earlier than 2020-08-03 |
| 22 | 4 | **Ergänzende Zustandserfassung** | 431d | 2019-03-04 | 2020-10-23 |  | 490d |  |
| 23 |  | HI inkl. Auswertung (ausstehende Obj./Programm 2019) | 150d | 2019-03-04 | 2019-09-27 |  | 636d | start no earlier than 2019-03-04 |
| 24 |  | Kanal-TV inkl. Spülen Entwässerungsleitungen * | 291d | 2019-03-04 | 2020-04-10 |  | 495d | start no earlier than 2019-03-04 |
| 25 |  | Kanal-TV Bachdurchlässe | 130d | 2020-01-01 | 2020-06-30 |  | 438d | finish no earlier than 2020-06-30 |
| 26 |  | Belag/Fundation (*) | 130d | 2019-04-01 | 2019-09-27 |  | 636d | start no earlier than 2019-04-01 |
| 27 | 4.5 | **Kunstbauten/Stützmauern** | 235d | 2019-12-02 | 2020-10-23 |  | 490d |  |
| 28 |  | Erstellung Konzept inkl. Kostenschätzung | 75d | 2019-12-02 | 2020-03-13 |  | 515d | start no earlier than 2019-12-02 |
| 29 |  | Erstellung Unterlagen | 34d | 2020-03-16 | 2020-04-30 |  | 481d | start no earlier than 2020-03-16 |
| 30 |  | Submission | 15d | 2020-05-04 | 2020-05-22 |  | 465d | start no earlier than 2020-05-04 |
| 31 |  | Vergabeantrag IG | 10d | 2020-05-25 | 2020-06-05 |  | 455d | start no earlier than 2020-05-25 |
| 32 |  | Vergabe ASTRA | 15d | 2020-06-08 | 2020-06-26 |  | 440d | start no earlier than 2020-06-08 |
| 33 |  | Erfassung | 55d | 2020-07-06 | 2020-09-18 |  | 380d | start no earlier than 2020-07-06 |
| 34 |  | Auswertung | 40d | 2020-08-31 | 2020-10-23 |  | 355d | start no earlier than 2020-08-31 |
| 35 |  | Überwachungsmessungen Stützmauern 2020 | 65d | 2020-05-04 | 2020-07-31 |  | 415d | finish no earlier than 2020-07-31 |
| 36 |  | Ergänzende visuelle Inspektionen 2020; Kanal-TV Bachdurchlässe | 65d | 2020-05-04 | 2020-07-31 |  | 415d | start no earlier than 2020-05-04 |
| 37 |  | Fremdwassermessung (punktuell) | 20d | 2019-10-16 | 2019-11-11 |  | 604d |  |
| 38 |  | BSA: Schachtaufnahmen, Ausrüstungsgrad | 121d | 2019-10-14 | 2020-03-27 |  | 505d | start no earlier than 2019-10-14 |
| 39 | 5 | **Grundlagen Erhaltungskonzept EK** | 326d | 2019-07-01 | 2020-09-25 |  | 510d |  |
| 40 |  | Grundlagen GIS-basierte Entwässerungsplanung | 131d | 2019-07-01 | 2019-12-27 |  | 570d | start no earlier than 2019-07-01 |
| 41 |  | Übergeordnetes SABA-Konzept V 0.1 | 130d | 2019-12-02 | 2020-05-29 |  | 460d | start no earlier than 2019-12-01 |
| 42 |  | Entscheid SABA-Konzept überg. | 1d | 2020-06-11 | 2020-06-11 |  | 451d | start no earlier than 2020-06-11 |
| 43 |  | EP Rh-Fr SABA-Konzept V 0.9 | 65d | 2020-06-15 | 2020-09-11 |  | 385d | start no earlier than 2020-06-15 |
| 44 |  | Projektentscheid SABA Rh-Fr | 1d | 2020-09-25 | 2020-09-25 |  | 375d | start no earlier than 2020-09-25 |
| 45 |  | Grundsatzentscheide | 65d | 2020-03-02 | 2020-05-29 |  | 460d | start no earlier than 2020-03-02 |
| 46 |  | Entscheid Grundsatzentscheide | 1d | 2020-06-18 | 2020-06-18 |  | 446d | start no earlier than 2020-06-18 |
| 47 | 6 | **Massnahmenkonzept** | 610d | 2019-11-04 | 2022-03-04 |  | 135d |  |
| 48 |  | T-U: Normalprofil/Normprüfung/Abschnittseinteilung | 88d | 2020-01-01 | 2020-05-01 |  | 480d | start no earlier than 2020-01-01 |
| 49 |  | T-U: Belagskonzept | 80d | 2020-04-13 | 2020-07-31 |  | 415d | start no earlier than 2020-04-13 |
| 50 |  | T-U: Hydraulische Prüfung / Entwässerungskonzept | 90d | 2020-03-30 | 2020-07-31 |  | 415d | start no earlier than 2020-03-30 |
| 51 |  | Alle FB: Konzepte (Faktenblätter) | 110d | 2020-03-30 | 2020-08-28 |  | 395d | start no earlier than 2020-03-30 |
| 52 |  | K, T-G: Nutzungsvereinbarungen | 65d | 2020-03-30 | 2020-06-26 |  | 440d | start no earlier than 2020-03-30 |
| 53 |  | K, T-G: Stat. Triage | 150d | 2019-11-04 | 2020-05-29 |  | 460d | start no earlier than 2019-11-04 |
| 54 |  | K, T-G: PB/Stat. Überprüfung | 150d | 2020-05-04 | 2020-11-27 |  | 330d | start no earlier than 2020-05-04 |
| 55 |  | Alle FB: Massnahmen, Termine, Kosten | 155d | 2020-06-29 | 2021-01-29 |  | 285d | start no earlier than 2020-06-29 |
| 56 |  | Bauablauf/temp. Verkehrsführung | 80d | 2020-08-31 | 2020-12-18 |  | 315d | start no earlier than 2020-08-31 |
| 57 |  | Erstellung Fachdossiers Bau + BSA V0.1 | 150d | 2020-11-02 | 2021-05-28 |  | 200d | start no earlier than 2020-11-02 |
| 58 |  | Abgleich mit Dritten | 150d | 2020-11-02 | 2021-05-28 |  | 200d | start no earlier than 2020-11-02 |
| 59 |  | Erstellung Synthesedossier V0.1 | 90d | 2021-03-29 | 2021-07-30 |  | 155d | start no earlier than 2021-03-29 |
| 60 |  | Vernehmlassung | 65d | 2021-08-02 | 2021-10-29 |  | 90d | start no earlier than 2021-08-02 |
| 61 |  | Bereinigung | 45d | 2021-11-01 | 2021-12-31 |  | 45d | start no earlier than 2021-11-01 |
| 62 |  | Genehmigung | 45d | 2022-01-03 | 2022-03-04 |  | 15d | start no earlier than 2022-01-03 |
| 63 | 7 | **AP Lärm, 1 LSW** | 125d | 2020-06-29 | 2020-12-18 |  | 450d |  |
| 64 |  | Konzept | 25d | 2020-06-29 | 2020-07-31 |  | 430d | start no earlier than 2020-06-29 |
| 65 |  | NV, PB | 25d | 2020-08-03 | 2020-09-04 |  | 405d | start no earlier than 2020-08-02 |
| 66 |  | Massnahmen, Kosten, Termine | 40d | 2020-08-03 | 2020-09-25 |  | 390d | start no earlier than 2020-08-03 |
| 67 |  | Erstellung Dokumente | 45d | 2020-08-31 | 2020-10-30 |  | 365d | start no earlier than 2020-08-31 |
| 68 |  | Vernehmlassung | 20d | 2020-11-02 | 2020-11-27 |  | 345d | start no earlier than 2020-11-02 |
| 69 |  | Bereinigung Dokumente | 15d | 2020-11-30 | 2020-12-18 |  | 330d | start no earlier than 2020-11-30 |
| 70 | 8 | **Ausführungsprojekt AP SABA** | 500d | 2020-10-12 | 2022-09-09 |  | 0d |  |
| 71 |  | Konzepte | 61d | 2020-10-12 | 2021-01-04 |  | 24d | start no earlier than 2020-10-12 |

| ID | Task | Duration | Start | Finish | Predecessors | Total float | Constraint |
| --- | --- | --- | --- | --- | --- | --- | --- |
| 72 | Auslegung SABA-Standorte und Bauwerke | 190d | 2021-01-05 | 2021-09-27 | 71 | 19d | start no earlier than 2021-01-04 |
| 73 | Ergänzung Entwässerungssystem (Perimeter NS) | 112d | 2021-04-26 | 2021-09-28 | 72FF |  |  |
| 74 | Auslegung BSA für SABA und Bauwerke | 45d | 2021-02-22 | 2021-10-08 |  | 240d | start no earlier than 2021-02-22 |
| 75 | Definition Bauliche Massnahmen (T-G, K) | 33d | 2021-08-26 | 2021-10-11 | 72FS-23d | 19d | finish no earlier than 2021-09-03 |
| 76 | Umweltnotiz (Erstinfo/Hauptarbeiten) | 63d | 2021-02-22 | 2021-11-12 |  | 215d | start no earlier than 2021-02-22 |
| 77 | Abgleich FG, Kosten, Termine | 45d | 2021-10-18 | 2021-12-17 | 75FS-23d | 190d | start no earlier than 2021-10-18 |
| 78 | Erstellung Dossier Bau + BSA V0.1 (3x) | 75d | 2021-11-01 | 2022-02-11 | 75FS-5d | 0d | start no earlier than 2021-11-01 |
| 79 | Vernehmlassung | 65d | 2022-02-14 | 2022-05-13 | 78 | 0d | start no earlier than 2021-08-30 |
| 80 | Bereinigung | 45d | 2022-05-16 | 2022-07-15 | 79 | 0d | start no earlier than 2021-11-29 |
| 81 | Technische Genehmigung (ASTRA F3/Zentrale) | 40d | 2022-07-18 | 2022-09-09 | 80 | 0d | start no earlier than 2022-01-31 |
| 82 | Ausführungsprojekt AP Installationen (evtl.) | 480d | 2020-05-25 | 2022-03-25 |  | 120d |  |

## Version 2 (data date 2021-09-08, saved 2021-09-16, file 20210908_EP Rh-Fr_Planungsprogramm_9890-140_FCh.mpp)

Last finish 2022-09-09 → 2023-03-14 (+186d). Complete tasks 0 → 58.

Added:

| ID | Task | Duration | Start | Finish | Predecessors | Constraint |
| --- | --- | --- | --- | --- | --- | --- |
| 61 | Abgleich Dossier mit APs und Ergänzungen | 44d | 2021-12-01 | 2022-01-31 | 60, 65 |  |
| 63 | GHGW; Freigabe | 0d | 2021-07-08 A | 2021-07-08 A |  | start no earlier than 2021-07-08 |
| 64 | GHGW; Standortdefinition (PV Verkehr) | 39d | 2021-07-08 A | 2021-08-31 |  |  |
| 65 | GHGW; Projektierung T/U inkl. BSA, K (& T/G) | 65d | 2021-09-01 A | 2021-11-30 | 64 |  |
| 66 | GHGW Integration in MK-Dossier | 38d | 2021-11-01 | 2021-12-22 | 65FS-22d | start no earlier than 2021-11-01 |
| 79 | NV, PB | 20d | 2021-02-01 A | 2021-02-26 A | 78 | start no earlier than 2020-10-12 |
| 82 | ZL Überprüfung Drittflächen | 69d | 2021-09-20 | 2021-12-23 |  | start no earlier than 2021-09-20 |
| 83 | AP SABA - Abgleich über alle TP | 27d | 2021-12-24 | 2022-01-31 | 82 |  |
| 86 | **AP AS Frick - Bypass Kreisel West** | 346d | 2021-09-15 | 2023-01-11 |  |  |
| 87 | Entscheid AP | 0d | 2021-09-15 | 2021-09-15 |  | start no earlier than 2021-09-15 |
| 88 | AP Dossier | 58d | 2021-09-15 | 2021-12-03 | 87 | start no earlier than 2021-09-03 |
| 89 | AP: Prüfung Vorabzug FU bis Auflage | 258d | 2021-12-06 | 2022-11-30 | 88 |  |
| 90 | AP: Öffentliche Auflage | 30d | 2022-12-01 | 2023-01-11 | 89 |  |
| 93 | Landerwerb abschliessend behandelt | 0d | 2021-10-22 | 2021-10-22 |  | start no earlier than 2021-10-22 |
| 94 | AP-Dossier Installationsplätze | 109d | 2021-07-01 A | 2021-12-23 | 93FF+45d | start no earlier than 2021-07-01 |
| 96 | AP: Öffentliche Auflage | 30d | 2023-01-03 | 2023-02-13 | 95 |  |

Removed: 74 Auslegung BSA für SABA und Bauwerke; 75 Definition Bauliche Massnahmen (T-G, K); 81 Technische Genehmigung (ASTRA F3/Zentrale)

Changed:

| ID | Task | Start | Finish | Duration | Complete | Total float | Predecessors | Other |
| --- | --- | --- | --- | --- | --- | --- | --- | --- |
| 1 | Projektstart IG | 2018-10-01 A | 2018-10-01 A |  | 0% → 100% |  |  |  |
| 3 | **Grundlagen** | 2018-10-01 A | 2020-01-31 A |  | 0% → 100% | 680d → none |  |  |
| 4 | Grundlagenverifikation | 2018-10-01 A | 2019-01-04 A |  | 0% → 100% | 826d → none |  |  |
| 5 | erg. GL-Beschaffung Archive ASTRA/NSNW | 2018-12-10 A | 2019-03-29 A |  | 0% → 100% | 610d → none |  |  |
| 6 | Aufarbeitung Archiv/Digitalisierung | 2019-04-01 A | 2019-11-01 A |  | 0% → 100% | 610d → none |  |  |
| 7 | Vervollständigen Grundlagen (Bauwerkskizzen etc) | 2019-08-05 A | 2019-09-27 A |  | 0% → 100% | 636d → none |  |  |
| 8 | Plangrundlagen erarbeiten (u.a. IO-Plan) | 2019-07-01 A | 2020-01-31 A |  | 0% → 100% | 545d → none |  |  |
| 9 | Perimeterdefinition in Situation | 2019-04-12 A | 2019-04-12 A |  | 0% → 100% | 756d → none |  |  |
| 10 | Schnittstellen/Verantwortlichkeiten geklärt | 2019-04-12 A | 2019-04-12 A |  | 0% → 100% | 756d → none |  |  |
| 11 | Einfluss aus Drittprojekten geklärt | 2019-03-01 A | 2019-03-01 A |  | 0% → 100% | 786d → none |  |  |
| 12 | **Dritte** | 2019-04-29 A | 2021-03-26 A |  | 0% → 100% | 380d → none |  |  |
| 13 | Vermessung: Schachtprotokolle | 2019-04-29 A | 2019-07-31 A |  | 0% → 100% | 678d → none |  |  |
| 14 | Vermessung: DTM, Aufnahmen | 2019-04-29 A | 2019-09-27 A |  | 0% → 100% | 636d → none |  |  |
| 15 | Lärm: Prüfen Erforderlichkeit AP | 2019-06-03 A | 2019-09-27 A |  | 0% → 100% | 636d → none |  |  |
| 16 | PV Umwelt/Akustiker/Verkehrsingenieur/Geologe Grundlagen | 2019-08-05 A | 2020-05-01 A |  | 0% → 100% | 480d → none |  |  |
| 17 | Entscheid AP Lärm ja/nein | 2020-05-01 A | 2020-05-01 A |  | 0% → 100% | 480d → none |  |  |
| 18 | **PV Akustik (AP LS)** | 2020-04-27 A | 2021-03-26 A |  | 0% → 100% | 380d → none |  |  |
| 19 | Erstellung Dossier V 0.9 | 2020-04-27 A | 2020-12-25 A |  | 0% → 100% | 310d → none |  |  |
| 20 | Prüfung, Bereinigung, Technische Genehmigung | 2021-01-04 A | 2021-03-26 A |  | 0% → 100% | 245d → none |  |  |
| 21 | PV Umwelt (UWN, Etc.) | 2020-08-03 A | 2020-11-27 A |  | 0% → 100% | 330d → none |  |  |
| 22 | **Ergänzende Zustandserfassung** | 2019-03-04 A | 2020-10-23 A |  | 0% → 100% | 490d → none |  |  |
| 23 | HI inkl. Auswertung (ausstehende Obj./Programm 2019) | 2019-03-04 A | 2019-09-27 A |  | 0% → 100% | 636d → none |  |  |
| 24 | Kanal-TV inkl. Spülen Entwässerungsleitungen * | 2019-03-04 A | 2020-04-10 A |  | 0% → 100% | 495d → none |  |  |
| 25 | Kanal-TV Bachdurchlässe | 2020-01-01 A | 2020-06-30 A |  | 0% → 100% | 438d → none |  |  |
| 26 | Belag/Fundation (*) | 2019-04-01 A | 2019-09-27 A |  | 0% → 100% | 636d → none |  |  |
| 27 | **Kunstbauten/Stützmauern** | 2019-12-02 A | 2020-10-23 A |  | 0% → 100% | 490d → none |  |  |
| 28 | Erstellung Konzept inkl. Kostenschätzung | 2019-12-02 A | 2020-03-13 A |  | 0% → 100% | 515d → none |  |  |
| 29 | Erstellung Unterlagen | 2020-03-16 A | 2020-04-30 A |  | 0% → 100% | 481d → none |  |  |
| 30 | Submission | 2020-05-04 A | 2020-05-22 A |  | 0% → 100% | 465d → none |  |  |
| 31 | Vergabeantrag IG | 2020-05-25 A | 2020-06-05 A |  | 0% → 100% | 455d → none |  |  |
| 32 | Vergabe ASTRA | 2020-06-08 A | 2020-06-26 A |  | 0% → 100% | 440d → none |  |  |
| 33 | Erfassung | 2020-07-06 A | 2020-09-18 A |  | 0% → 100% | 380d → none |  |  |
| 34 | Auswertung | 2020-08-31 A | 2020-10-23 A |  | 0% → 100% | 355d → none |  |  |
| 35 | Überwachungsmessungen Stützmauern 2020 | 2020-05-04 A | 2020-07-31 A |  | 0% → 100% | 415d → none |  |  |
| 36 | Ergänzende visuelle Inspektionen 2020; Kanal-TV Bachdurchlässe | 2020-05-04 A | 2020-07-31 A |  | 0% → 100% | 415d → none |  |  |
| 37 | Fremdwassermessung (punktuell) | 2019-10-16 A | 2019-11-11 A |  | 0% → 100% | 604d → none |  |  |
| 38 | BSA: Schachtaufnahmen, Ausrüstungsgrad | 2019-10-14 A | 2020-03-27 A |  | 0% → 100% | 505d → none |  |  |
| 39 | **Grundlagen Erhaltungskonzept EK** | 2019-07-01 A | 2020-09-25 A |  | 0% → 100% | 510d → none |  |  |
| 40 | Grundlagen GIS-basierte Entwässerungsplanung | 2019-07-01 A | 2019-12-27 A |  | 0% → 100% | 570d → none |  |  |
| 41 | Übergeordnetes SABA-Konzept V 0.1 | 2019-12-02 A | 2020-05-29 A |  | 0% → 100% | 460d → none |  |  |
| 42 | Entscheid SABA-Konzept überg. | 2020-06-11 A | 2020-06-11 A |  | 0% → 100% | 451d → none |  |  |
| 43 | EP Rh-Fr SABA-Konzept V 0.9 | 2020-06-15 A | 2020-09-11 A |  | 0% → 100% | 385d → none |  |  |
| 44 | Projektentscheid SABA Rh-Fr | 2020-09-25 A | 2020-09-25 A |  | 0% → 100% | 375d → none |  |  |
| 45 | Grundsatzentscheide | 2020-03-02 A | 2020-05-29 A |  | 0% → 100% | 460d → none |  |  |
| 46 | Entscheid Grundsatzentscheide | 2020-06-18 A | 2020-06-18 A |  | 0% → 100% | 446d → none |  |  |
| 47 | **Massnahmenkonzept** | 2019-11-04 A | 2022-03-04 → 2022-12-12 (+283d) | 610d → 811d | 0% → 77% | 135d → 66d |  |  |
| 48 | T-U: Normalprofil/Normprüfung/Abschnittseinteilung | 2020-01-01 A | 2020-05-01 A |  | 0% → 100% | 480d → none |  |  |
| 49 | T-U: Belagskonzept | 2020-04-13 A | 2020-07-31 A |  | 0% → 100% | 415d → none |  |  |
| 50 | T-U: Hydraulische Prüfung / Entwässerungskonzept | 2020-03-30 A | 2020-07-31 A |  | 0% → 100% | 415d → none |  |  |
| 51 | Alle FB: Konzepte (Faktenblätter) | 2020-03-30 A | 2020-08-28 A |  | 0% → 100% | 395d → none |  |  |
| 52 | K, T-G: Nutzungsvereinbarungen | 2020-03-30 A | 2020-06-26 A |  | 0% → 100% | 440d → none |  |  |
| 53 | K, T-G: Stat. Triage | 2019-11-04 A | 2020-05-29 A |  | 0% → 100% | 460d → none |  |  |
| 54 | K, T-G: PB/Stat. Überprüfung | 2020-05-04 A | 2020-11-27 A |  | 0% → 100% | 330d → none |  |  |
| 55 | Alle FB: Massnahmen, Termine, Kosten | 2020-06-29 A | 2021-01-29 A |  | 0% → 100% | 285d → none |  |  |
| 56 | Bauablauf/temp. Verkehrsführung | 2020-08-31 A | 2020-12-18 A |  | 0% → 100% | 315d → none |  |  |
| 57 | Erstellung Fachdossiers Bau + BSA V0.1 | 2020-11-02 A | 2021-05-28 A |  | 0% → 100% | 200d → none |  |  |
| 58 | Abgleich mit Dritten | 2020-11-02 A | 2021-05-28 A |  | 0% → 100% | 200d → none |  |  |
| 59 | Erstellung Synthesedossier V0.1 | 2021-03-29 A | 2021-07-30 A |  | 0% → 100% | 155d → none |  |  |
| 60 | Stillstand MK-Dossier | 2021-10-18 → 2021-08-02 A (-77d) | 2021-12-17 → 2021-11-30 (-17d) | 45d → 87d | 0% → 32% | 190d → 66d | Definition Bauliche Massnahmen (T-G, K)FS-23d → 59 | was named Abgleich FG, Kosten, Termine; constraint start no earlier than 2021-10-18 → none |
| 62 | **Dossierergänzungen** | 2021-04-26 → 2021-07-08 A (+73d) | 2021-09-28 → 2021-11-11 (+44d) | 112d → 91d | 0% → 32% |  | 80FF → none | was named Ergänzung Entwässerungssystem (Perimeter NS) |
| 67 | MK: Vorprüfung GPL/BHU - allfällige Überarbeitung Dossier | 2021-08-02 → 2022-02-01 (+183d) | 2021-10-29 → 2022-03-31 (+153d) | 65d → 43d |  | 90d → 66d | none → 61, 83 | was named Vernehmlassung |
| 68 | MK: Bereinigte Fassung | 2021-11-01 → 2022-03-31 (+150d) | 2021-12-31 → 2022-03-31 (+90d) | 45d → 0d |  | 45d → 66d | none → 67 | was named Bereinigung |
| 69 | MK: Prüfung Vorabzug - Genehmigung | 2022-01-03 → 2022-04-01 (+88d) | 2022-03-04 → 2022-12-12 (+283d) | 45d → 182d |  | 15d → 66d | none → 68 | was named Genehmigung |
| 70 | **AP Lärm, 1 LSW** | 2020-06-29 A | 2020-12-18 → 2022-03-29 (+466d) | 125d → 457d | 0% → 37% | 450d → 250d |  |  |
| 71 | Konzept | 2020-06-29 A | 2020-07-31 A |  | 0% → 100% | 430d → none |  |  |
| 72 | NV, PB | 2020-08-03 A | 2020-09-04 A |  | 0% → 100% | 405d → none |  |  |
| 73 | Massnahmen, Kosten, Termine | 2020-08-03 A | 2020-09-25 A |  | 0% → 100% | 390d → none |  |  |
| 74 | Erstellung Dokumente | 2020-08-31 A | 2020-10-30 A |  | 0% → 100% | 365d → none |  |  |
| 75 | AP: Prüfung Vorabzug FU bis Auflage | 2020-11-02 → 2021-01-01 A (+60d) | 2020-11-27 → 2022-02-15 (+445d) | 20d → 293d | 0% → 7% | 345d → 15d |  | was named Vernehmlassung |
| 76 | AP: Öffentliche Auflage | 2020-11-30 → 2022-02-16 A (+443d) | 2020-12-18 → 2022-03-29 (+466d) | 15d → 30d | 0% → 50% | 330d → 250d | none → 75 | was named Bereinigung Dokumente; constraint start no earlier than 2020-11-30 → none |

| ID | Task | Start | Finish | Duration | Complete | Total float | Predecessors | Other |
| --- | --- | --- | --- | --- | --- | --- | --- | --- |
| 77 | **Ausführungsprojekt AP SABA** | 2020-10-12 → 2020-11-02 A (+21d) | 2022-09-09 → 2023-03-14 (+186d) | 500d → 617d | 0% → 39% |  |  |  |
| 78 | Konzepte (Faktenblätter) | 2020-10-12 → 2020-11-02 A (+21d) | 2021-01-04 → 2021-01-29 A (+25d) | 61d → 65d | 0% → 100% | 24d → none |  | was named Konzepte; constraint start no earlier than 2020-10-12 → start no earlier than 2020-11-02 |
| 80 | Massnahmen, Kosten, Termine | 2021-01-05 → 2021-03-01 A (+55d) | 2021-09-27 → 2021-09-10 (-17d) | 190d → 140d | 0% → 99% | 19d → 392d | 78 → 79 | was named Auslegung SABA-Standorte und Bauwerke; constraint start no earlier than 2021-01-04 → none |
| 81 | Erstellung Dossier Bau + BSA V0.1 | 2021-11-01 → 2021-06-01 A (-153d) | 2022-02-11 → 2021-12-23 (-50d) | 75d → 148d | 0% → 49% | 0d → 318d | Definition Bauliche Massnahmen (T-G, K)FS-5d → 80SS+66d | was named Erstellung Dossier Bau + BSA V0.1 (3x); constraint start no earlier than 2021-11-01 → start no earlier than 2021-01-04 |
| 84 | AP: Prüfung Vorabzug FU bis Auflage | 2022-02-14 → 2022-02-01 (-13d) | 2022-05-13 → 2023-01-31 (+263d) | 65d → 261d |  |  | 81 → 83 | was named Vernehmlassung |
| 85 | AP: Öffentliche Auflage | 2022-05-16 → 2023-02-01 (+261d) | 2022-07-15 → 2023-03-14 (+242d) | 45d → 30d |  |  |  | was named Bereinigung |
| 91 | Ausführungsprojekt AP Installationen | 2020-05-25 A |  |  | 0% → 70% | 120d → 252d |  | was named Ausführungsprojekt AP Installationen (evtl.) |
| 95 | AP: Prüfung Vorabzug FU bis Auflage | 2021-02-22 → 2022-01-03 (+315d) | 2021-11-12 → 2023-01-02 (+416d) | 63d → 261d |  | 215d → 21d | none → 94FS+6d | was named Umweltnotiz (Erstinfo/Hauptarbeiten); constraint start no earlier than 2021-02-22 → none |
